# Cronograma

How a schedule from MS Project changed from version to version. A marks actual dates.

## Version 1 (saved 2018-09-17, file Modelo Cronograma Projeto Integrado final.mpp)

| ID | WBS | Task | Duration | Start | Finish | Complete | Total float | Constraint |
| --- | --- | --- | --- | --- | --- | --- | --- | --- |
| 1 | 1 | **Otimização Organizacional com Apoio de Sistemas de Informação** | 319d | 2018-08-13 09:00 A | 2019-10-31 18:00 | 61% |  |  |
| 2 | 1.1 | **Cronograma / Documentação** | 26d | 2018-08-13 09:00 A | 2018-09-17 18:00 | 100% |  |  |
| 3 |  | Preparar cronograma | 0.38d | 2018-09-03 09:00 A | 2018-09-03 18:00 A | 100% |  | finish no earlier than 2018-09-03 18:00 |
| 4 |  | Carta de apresentação | 0.13d | 2018-08-13 09:00 A | 2018-08-13 10:02 A | 100% |  | finish no earlier than 2018-08-13 18:00 |
| 5 |  | Carta de intenção | 0.12d | 2018-08-13 09:00 A | 2018-08-13 10:00 A | 100% |  | finish no earlier than 2018-08-20 18:00 |
| 6 |  | Termo de compromisso | 0.12d | 2018-08-20 09:00 A | 2018-08-20 10:00 A | 100% |  | start no earlier than 2018-03-02 09:00 |
| 7 |  | Formulário projeto extensionista | 0.13d | 2018-08-20 09:00 A | 2018-08-20 10:02 A | 100% |  | start no earlier than 2018-03-02 09:00 |
| 8 |  | Termo de abertura de projeto | 0.13d | 2018-08-27 09:00 A | 2018-08-27 10:02 A | 100% |  | start no earlier than 2018-03-02 09:00 |
| 9 | 1.2 | **Agradecimentos / Resumo / Introdução** | 6d | 2018-08-13 09:00 A | 2018-08-20 18:00 | 100% |  |  |
| 10 |  | Agradecimentos | 0.12d | 2018-08-13 09:00 A | 2018-08-13 10:00 A | 100% |  | start no earlier than 2018-03-06 09:00 |
| 11 |  | Resumo | 0.25d | 2018-08-13 09:00 A | 2018-08-13 11:00 A | 100% |  | start no earlier than 2018-08-13 09:00 |
| 12 | 1.2.3 | **Introdução** | 1d | 2018-08-20 09:00 A | 2018-08-20 18:00 | 100% |  |  |
| 13 | 1.2.3.1 | **Objetivos** | 0.12d | 2018-08-20 09:00 A | 2018-08-20 10:00 A | 100% |  |  |
| 14 |  | Objetivos gerais | 0.12d | 2018-08-20 09:00 A | 2018-08-20 10:00 A | 100% |  |  |
| 15 |  | Objetivos específicos | 0.12d | 2018-08-20 09:00 A | 2018-08-20 10:00 A | 100% |  |  |
| 16 | 1.2.3.2 | **Procedimentos de pesquisa** | 0.12d | 2018-08-20 09:00 A | 2018-08-20 10:00 A | 100% |  |  |
| 17 |  | Pesquisa exploratória | 0.12d | 2018-08-20 09:00 A | 2018-08-20 10:00 A | 100% |  | finish no earlier than 2018-03-13 18:00 |
| 18 |  | Pesquisa bibliográfica | 0.12d | 2018-08-20 09:00 A | 2018-08-20 10:00 A | 100% |  |  |
| 19 |  | Pesquisa documental | 0.12d | 2018-08-20 09:00 A | 2018-08-20 10:00 A | 100% |  |  |
| 20 |  | Estudo de caso | 0.12d | 2018-08-20 09:00 A | 2018-08-20 10:00 A | 100% |  |  |
| 21 |  | Pesquisa ação | 0.12d | 2018-08-20 09:00 A | 2018-08-20 10:00 A | 100% |  |  |
| 22 | 1.3 | **Fundamentação Teórica** | 5.62d | 2018-08-27 09:00 A | 2018-09-03 15:00 A | 100% |  |  |
| 23 |  | Pensamento sistêmico | 0.62d | 2018-08-27 09:00 A | 2018-08-27 15:00 A | 100% |  | finish no earlier than 2018-04-07 18:00 |
| 24 |  | Sistemas de informação | 0.62d | 2018-08-27 09:00 A | 2018-08-27 15:00 A | 100% |  | finish no earlier than 2018-03-21 18:00 |
| 25 | 1.3.3 | **Engenharia de software** | 5.62d | 2018-08-27 09:00 A | 2018-09-03 15:00 A | 100% |  |  |
| 26 |  | Gerenciamento de configuração de software | 1d | 2018-08-27 09:00 A | 2018-08-27 18:00 A | 100% |  | finish no earlier than 2018-08-27 18:00 |
| 27 |  | Modelos de ciclo de vida em engenharia de software e requisitos | 0.62d | 2018-09-03 09:00 A | 2018-09-03 15:00 A | 100% |  | start no earlier than 2018-09-03 09:00 |
| 28 |  | Métodologia e métodos | 0.62d | 2018-09-03 09:00 A | 2018-09-03 15:00 A | 100% |  | start no earlier than 2018-09-03 09:00 |
| 29 | 1.4 | **Estudo de Caso** | 299d | 2018-09-10 09:00 | 2019-10-31 18:00 |  |  |  |
| 30 | 1.4.1 | **Caracterização da organização e seu ambiente** | 26d | 2018-09-10 09:00 | 2018-10-15 18:00 |  |  |  |
| 31 |  | Histórico organizacional | 0.25d | 2018-09-10 16:00 | 2018-09-10 18:00 |  | 298d | finish no earlier than 2018-09-10 18:00 |
| 32 |  | Missão, valores e visão estratégica | 0.5d | 2018-09-10 09:00 | 2018-09-10 14:00 |  | 298.5d |  |
| 33 |  | Matriz SWOT | 0.5d | 2018-09-17 09:00 | 2018-09-17 14:00 |  | 293.5d | start no earlier than 2018-09-17 09:00 |
| 34 |  | Planejamento estratégico | 0.5d | 2018-09-24 09:00 | 2018-09-24 14:00 |  | 288.5d | start no earlier than 2018-09-24 09:00 |
| 35 |  | Mapeamento dos processos com BPMN | 1d | 2018-10-01 09:00 | 2018-10-01 18:00 |  | 283d | start no earlier than 2018-10-01 09:00 |
| 36 |  | Identificação do problema | 0.25d | 2018-10-08 09:00 | 2018-10-08 11:00 |  | 278.75d | start no earlier than 2018-10-08 09:00 |
| 37 |  | Análise de viabilidade econômica | 0.75d | 2018-10-15 09:00 | 2018-10-15 16:00 |  | 273.25d | start no earlier than 2018-10-15 09:00 |
| 38 | 1.4.2 | **Fase de concepção** | 18d | 2019-03-07 09:00 | 2019-03-31 18:00 |  |  |  |
| 39 |  | Gerenciamento de configuração de software | 0d | 2019-03-07 09:00 | 2019-03-07 09:00 |  | 171d | start no earlier than 2019-03-07 09:00 |
| 40 |  | Gerencimento de mudanças | 0d | 2019-03-07 09:00 | 2019-03-07 09:00 |  | 171d |  |
| 41 |  | Modelo de ciclo de vida | 0d | 2019-03-07 09:00 | 2019-03-07 09:00 |  | 171d |  |
| 42 |  | Metodologias de engenharia de software adotadas | 0d | 2019-03-07 09:00 | 2019-03-07 09:00 |  | 171d |  |
| 43 |  | Gerenciamento de projeto | 0d | 2019-03-07 09:00 | 2019-03-07 09:00 |  | 171d |  |
| 44 |  | Engenharia de requisitos | 0d | 2019-03-07 09:00 | 2019-03-07 09:00 |  | 171d |  |
| 45 |  | Diagrama de caso de uso | 0d | 2019-03-07 09:00 | 2019-03-07 09:00 |  | 171d |  |
| 46 |  | Plano de testes | 0d | 2019-03-07 09:00 | 2019-03-07 09:00 |  | 171d |  |
| 47 | 1.4.3 | **Fase de elaboração** | 19d | 2019-04-04 09:00 | 2019-04-30 18:00 |  |  |  |
| 48 |  | Diagrama de classes | 0d | 2019-04-04 09:00 | 2019-04-04 09:00 |  | 151d |  |
| 49 |  | Diagrama de objetos | 0d | 2019-04-04 09:00 | 2019-04-04 09:00 |  | 151d |  |
| 50 |  | Diagrama de sequência | 0d | 2019-04-04 09:00 | 2019-04-04 09:00 |  | 151d |  |
| 51 |  | Diagrama de estado | 0d | 2019-04-04 09:00 | 2019-04-04 09:00 |  | 151d |  |
| 52 |  | Diagrama de implementação | 0d | 2019-04-04 09:00 | 2019-04-04 09:00 |  | 151d |  |
| 53 |  | Diagrama entidade-relacionamento | 0d | 2019-04-04 09:00 | 2019-04-04 09:00 |  | 151d |  |
| 54 | 1.4.3.7 | **Prototipagem** | 0d | 2019-04-04 09:00 | 2019-04-04 09:00 |  | 151d |  |
| 55 |  | Telas de navegação | 0d | 2019-04-04 09:00 | 2019-04-04 09:00 |  | 151d |  |
| 56 |  | Acesso a banco de dados | 0d | 2019-04-04 09:00 | 2019-04-04 09:00 |  | 151d |  |
| 57 | 1.4.4 | **Fase de construção** | 89d | 2019-05-01 09:00 | 2019-08-31 18:00 |  |  |  |
| 58 |  | Desenvolvimento de software | 0d | 2019-05-01 09:00 | 2019-05-01 09:00 |  | 132d |  |
| 59 |  | Auditoria e segurança do sistema de informação | 0d | 2019-05-01 09:00 | 2019-05-01 09:00 |  | 132d |  |
| 60 | 1.4.4.3 | **Interface** | 0d | 2019-05-01 09:00 | 2019-05-01 09:00 |  | 132d |  |
| 61 |  | Avaliação ergonômica | 0d | 2019-05-01 09:00 | 2019-05-01 09:00 |  | 132d |  |
| 62 |  | Avaliação heurística (usabilidade) | 0d | 2019-05-01 09:00 | 2019-05-01 09:00 |  | 132d |  |
| 63 |  | Licenciamento e requisitos legais | 0d | 2019-05-01 09:00 | 2019-05-01 09:00 |  | 132d |  |
| 64 |  | Sistema de apoio à decisão | 0d | 2019-05-01 09:00 | 2019-05-01 09:00 |  | 132d |  |
| 65 | 1.4.5 | **Fase de transição** | 45d | 2019-09-01 09:00 | 2019-10-31 18:00 |  |  |  |
| 66 |  | Manual do usuário | 0d | 2019-09-02 09:00 | 2019-09-02 09:00 |  | 44d | start no earlier than 2019-09-02 09:00 |
| 67 |  | Manual do administrador | 0d | 2019-09-01 09:00 | 2019-09-01 09:00 |  | 44d |  |
| 68 |  | Plano de treinamento | 0d | 2019-09-01 09:00 | 2019-09-01 09:00 |  | 44d |  |
| 69 |  | Custo benefício do sistema de informação | 0d | 2019-09-01 09:00 | 2019-09-01 09:00 |  | 44d |  |
| 70 |  | Dificuldades identificadas | 0d | 2019-09-01 09:00 | 2019-09-01 09:00 |  | 44d |  |

## Version 2 (saved 2019-03-20, file Cronograma 20-03-2019.mpp)

Last finish stays 2019-10-31. Complete tasks 20 → 37.

Added:

| ID | Task | Duration | Start | Finish | Constraint |
| --- | --- | --- | --- | --- | --- |
| 54 | Desenvolvimento do banco de dados | 1d | 2019-04-05 09:00 | 2019-04-06 18:00 | finish no earlier than 2019-04-06 18:00 |

Changed:

| ID | Task | Start | Finish | Duration | Complete | Total float | Other |
| --- | --- | --- | --- | --- | --- | --- | --- |
| 1 | **Otimização Organizacional com Apoio de Sistemas de Informação** |  |  | 319d → 319d? | 61% → 19% |  |  |
| 2 | **Cronograma / Documentação** | 2018-08-13 09:00 A → 2019-03-22 09:00 A (+221d) | 2018-09-17 18:00 → 2019-03-22 18:00 A (+186d) | 26d → 1d |  |  | baseline start 2018-08-13 09:00 → 2019-03-19 09:00; baseline finish 2018-09-17 18:00 → 2019-03-19 18:00 |
| 3 | Atualizar cronograma | 2018-09-03 09:00 A → 2019-03-22 09:00 A (+200d) | 2018-09-03 18:00 A → 2019-03-22 18:00 A (+200d) |  |  |  | was named Preparar cronograma; baseline start 2018-09-03 09:00 → 2019-03-19 09:00; baseline finish 2018-09-04 18:00 → 2019-03-19 18:00 |
| 4 | Atualizar carta de apresentação | 2018-08-13 09:00 A → 2019-03-22 09:00 A (+221d) | 2018-08-13 10:02 A → 2019-03-22 10:02 A (+221d) |  |  |  | was named Carta de apresentação; baseline start 2018-08-13 09:00 → 2019-03-19 09:00; baseline finish 2018-08-13 18:00 → 2019-03-19 18:00 |
| 5 | Atualizar carta de intenção | 2018-08-13 09:00 A → 2019-03-22 09:00 A (+221d) | 2018-08-13 10:00 A → 2019-03-22 10:00 A (+221d) |  |  |  | was named Carta de intenção; baseline start 2018-08-13 09:00 → 2019-03-19 09:00; baseline finish 2018-08-13 18:00 → 2019-03-19 18:00 |
| 6 | Atualizar termo de compromisso | 2018-08-20 09:00 A → 2019-03-22 09:00 A (+214d) | 2018-08-20 10:00 A → 2019-03-22 10:00 A (+214d) |  |  |  | was named Termo de compromisso; baseline start 2018-08-20 09:00 → 2019-03-19 09:00; baseline finish 2018-08-20 18:00 → 2019-03-19 18:00 |
| 7 | Atualizar formulário de projeto extensionista | 2018-08-20 09:00 A → 2019-03-22 09:00 A (+214d) | 2018-08-20 10:02 A → 2019-03-22 10:02 A (+214d) |  |  |  | was named Formulário projeto extensionista; baseline start 2018-08-20 09:00 → 2019-03-19 09:00; baseline finish 2018-08-20 18:00 → 2019-03-19 18:00 |
| 8 | Atualizar termo de abertura de projeto | 2018-08-27 09:00 A → 2019-03-22 09:00 A (+207d) | 2018-08-27 10:02 A → 2019-03-22 10:02 A (+207d) |  |  |  | was named Termo de abertura de projeto; baseline start 2018-08-27 09:00 → 2019-03-19 09:00; baseline finish 2018-08-27 18:00 → 2019-03-19 18:00 |
| 29 | **Estudo de Caso** | 2018-09-10 09:00 A |  | 299d → 299d? | 0% → 17% |  |  |
| 30 | **Caracterização da organização e seu ambiente** | 2018-09-10 09:00 A |  |  | 0% → 100% |  |  |
| 31 | Histórico organizacional | 2018-09-10 16:00 A | 2018-09-10 18:00 A |  | 0% → 100% | 298d → none |  |
| 32 | Missão, valores e visão estratégica | 2018-09-10 09:00 A | 2018-09-10 14:00 A |  | 0% → 100% | 298.5d → none |  |
| 33 | Matriz SWOT | 2018-09-17 09:00 A | 2018-09-17 14:00 A |  | 0% → 100% | 293.5d → none |  |
| 34 | Planejamento estratégico | 2018-09-24 09:00 A | 2018-09-24 14:00 A |  | 0% → 100% | 288.5d → none |  |
| 35 | Mapeamento dos processos com BPMN | 2018-10-01 09:00 A | 2018-10-01 18:00 A |  | 0% → 100% | 283d → none |  |
| 36 | Identificação do problema | 2018-10-08 09:00 A | 2018-10-08 11:00 A |  | 0% → 100% | 278.75d → none |  |
| 37 | Análise de viabilidade econômica | 2018-10-15 09:00 A | 2018-10-15 16:00 A |  | 0% → 100% | 273.25d → none |  |
| 38 | **Fase de concepção** |  | 2019-03-31 18:00 → 2019-04-04 18:00 (+4d) | 18d → 21d | 0% → 97% |  | baseline start none → 2018-10-02 09:00 |
| 39 | Gerenciamento de configuração de software | 2019-03-07 09:00 → 2018-10-02 09:00 A (-156d) | 2019-03-07 09:00 → 2018-10-02 11:00 A (-156d) | 0d → 0.25d | 0% → 100% | 171d → none | constraint start no earlier than 2019-03-07 09:00 → start no earlier than 2018-10-02 09:00; baseline start none → 2018-10-02 09:00; baseline finish none → 2018-10-02 18:00 |
| 40 | Gerencimento de mudanças | 2019-03-07 09:00 → 2018-10-02 09:00 A (-156d) | 2019-03-07 09:00 → 2018-10-02 11:00 A (-156d) | 0d → 0.25d | 0% → 100% | 171d → none | constraint none → start no earlier than 2018-10-02 09:00; baseline start none → 2018-10-02 09:00; baseline finish none → 2018-10-02 18:00 |
| 41 | Modelo de ciclo de vida | 2019-03-07 09:00 → 2018-10-15 09:00 A (-143d) | 2019-03-07 09:00 → 2018-10-15 12:00 A (-143d) | 0d → 0.38d | 0% → 100% | 171d → none | constraint none → start no earlier than 2018-10-15 09:00; baseline start none → 2018-10-15 09:00; baseline finish none → 2018-10-15 18:00 |
| 42 | Metodologias de engenharia de software adotadas | 2019-03-07 09:00 → 2018-10-15 09:00 A (-143d) | 2019-03-07 09:00 → 2018-10-15 12:00 A (-143d) | 0d → 0.38d | 0% → 100% | 171d → none | constraint none → start no earlier than 2018-10-15 09:00; baseline start none → 2018-10-15 09:00; baseline finish none → 2018-10-15 18:00 |
| 43 | Gerenciamento de projeto | 2019-03-07 09:00 → 2018-10-22 09:00 A (-136d) | 2019-03-07 09:00 → 2018-10-24 18:00 A (-134d) | 0d → 3d | 0% → 100% | 171d → none | constraint none → finish no earlier than 2018-10-24 18:00; baseline start none → 2018-10-22 09:00; baseline finish none → 2018-10-24 18:00 |
| 44 | Atualizar engenharia de requisitos | 2019-03-07 09:00 → 2019-03-20 09:00 A (+13d) | 2019-03-07 09:00 → 2019-03-22 18:00 A (+15d) | 0d → 3d | 0% → 100% | 171d → none | was named Engenharia de requisitos; constraint none → finish no earlier than 2019-03-22 18:00; baseline start none → 2019-03-20 09:00; baseline finish none → 2019-03-22 18:00 |
| 45 | Atualizar diagrama de caso de uso | 2019-03-07 09:00 → 2019-04-04 16:00 (+28d) | 2019-03-07 09:00 → 2019-04-04 18:00 (+28d) | 0d → 0.25d |  | 171d → 150d | was named Diagrama de caso de uso; constraint none → finish no earlier than 2019-04-04 18:00 |
| 46 | Plano de testes | 2019-03-07 09:00 → 2019-03-22 09:00 A (+15d) | 2019-03-07 09:00 → 2019-03-22 15:00 A (+15d) | 0d → 0.62d | 0% → 100% | 171d → none | constraint none → start no earlier than 2019-03-22 09:00; baseline start none → 2019-03-22 09:00; baseline finish none → 2019-03-22 18:00 |
| 47 | **Fase de elaboração** |  | 2019-04-30 18:00 → 2019-05-24 18:00 (+24d) | 19d → 37d | 0% → 40% |  |  |
| 48 | Atualizar diagrama de classes |  | 2019-04-04 09:00 → 2019-04-04 10:00 | 0d → 0.12d |  | 151d → 150.88d | was named Diagrama de classes |
| 49 | Atualizar diagrama de objetos |  | 2019-04-04 09:00 → 2019-04-04 11:00 | 0d → 0.25d |  | 151d → 150.75d | was named Diagrama de objetos |
| 50 | Atualizar diagrama de sequência |  | 2019-04-04 09:00 → 2019-04-04 10:00 | 0d → 0.12d |  | 151d → 150.88d | was named Diagrama de sequência |
| 51 | Atualizar diagrama de estado |  | 2019-04-04 09:00 → 2019-04-04 10:00 | 0d → 0.12d |  | 151d → 150.88d | was named Diagrama de estado |
| 52 | Atualizar diagrama de implementação |  | 2019-04-04 09:00 → 2019-04-04 14:00 | 0d → 0.5d |  | 151d → 150.5d | was named Diagrama de implementação |
| 53 | Atualizar diagrama entidade-relacionamento |  | 2019-04-04 09:00 → 2019-04-04 14:00 | 0d → 0.5d |  | 151d → 150.5d | was named Diagrama entidade-relacionamento |
| 55 | **Prototipagem** | 2019-04-04 09:00 → 2018-10-30 09:00 A (-156d) | 2019-04-04 09:00 → 2018-11-19 18:00 (-136d) | 0d → 15d | 0% → 50% | 151d → none | baseline start none → 2018-10-30 09:00 |
| 56 | Telas de navegação | 2019-04-04 09:00 → 2018-10-30 09:00 A (-156d) | 2019-04-04 09:00 → 2018-11-13 18:00 A (-142d) | 0d → 5d | 0% → 100% | 151d → none | constraint none → finish no earlier than 2018-11-13 18:00; baseline start none → 2018-10-30 09:00; baseline finish none → 2018-11-13 18:00 |
| 57 | Acesso a banco de dados | 2019-04-04 09:00 → 2018-10-30 09:00 (-156d) | 2019-04-04 09:00 → 2018-11-05 18:00 (-150d) | 0d → 5d |  | 151d → 258d |  |
| 58 | **Fase de construção** |  | 2019-08-31 18:00 → 2019-08-30 18:00 (-1d) | 89d → 88d | 0% → 12% |  | baseline start none → 2019-03-18 09:00 |
| 59 | Desenvolvimento de software | 2019-05-01 09:00 A | 2019-05-01 09:00 → 2019-08-30 18:00 (+121d) | 0d → 88d | 0% → 15% | 132d → 44d | constraint none → finish no earlier than 2019-08-30 18:00; baseline start none → 2019-03-18 09:00 |
| 60 | Auditoria e segurança do sistema de informação |  | 2019-05-01 09:00 → 2019-08-30 18:00 (+121d) | 0d → 88d |  | 132d → 44d | constraint none → start no earlier than 2019-05-01 09:00 |
| 61 | **Interface** | 2019-05-01 09:00 → 2018-10-30 09:00 A (-183d) | 2019-05-01 09:00 → 2018-11-13 18:00 A (-169d) | 0d → 11d | 0% → 100% | 132d → none | baseline start none → 2018-10-30 09:00; baseline finish none → 2018-11-13 18:00 |
| 62 | Avaliação ergonômica | 2019-05-01 09:00 → 2018-10-30 09:00 A (-183d) | 2019-05-01 09:00 → 2018-11-06 18:00 A (-176d) | 0d → 6d | 0% → 100% | 132d → none | baseline start none → 2018-10-30 09:00; baseline finish none → 2018-11-06 18:00 |
| 63 | Avaliação heurística (usabilidade) | 2019-05-01 09:00 → 2018-10-30 09:00 A (-183d) | 2019-05-01 09:00 → 2018-11-13 18:00 A (-169d) | 0d → 5d | 0% → 100% | 132d → none | constraint none → finish no earlier than 2018-11-06 18:00; baseline start none → 2018-10-30 09:00; baseline finish none → 2018-11-13 18:00 |
| 64 | Licenciamento e requisitos legais | 2019-05-01 09:00 → 2019-07-30 09:00 (+90d) | 2019-05-01 09:00 → 2019-08-01 18:00 (+92d) | 0d → 3d |  | 132d → 65d | constraint none → finish no earlier than 2019-08-01 18:00 |
| 65 | Sistema de apoio à decisão |  | 2019-05-01 09:00 → 2019-05-07 18:00 (+6d) | 0d → 5d |  | 132d → 127d |  |
| 66 | **Fase de transição** | 2019-09-01 09:00 → 2019-08-01 09:00 (-31d) | 2019-10-31 18:00 → 2019-09-10 18:00 (-51d) | 45d → 29d |  |  |  |
| 67 | Manual do usuário |  | 2019-09-02 09:00 → 2019-09-10 18:00 (+8d) | 0d → 7d |  | 44d → 37d |  |
| 68 | Manual do administrador | 2019-09-01 09:00 → 2019-08-01 09:00 (-31d) | 2019-09-01 09:00 → 2019-08-07 18:00 (-25d) | 0d → 5d |  | 44d → 61d |  |
| 69 | Plano de treinamento | 2019-09-01 09:00 → 2019-08-01 09:00 (-31d) | 2019-09-01 09:00 → 2019-08-14 18:00 (-18d) | 0d → 10d |  | 44d → 56d |  |
| 70 | Custo benefício do sistema de informação | 2019-09-01 09:00 → 2019-08-01 09:00 (-31d) | 2019-09-01 09:00 → 2019-08-01 18:00 (-31d) | 0d → 1d |  | 44d → 65d |  |
| 71 | Dificuldades identificadas | 2019-09-01 09:00 → 2019-08-01 09:00 (-31d) | 2019-09-01 09:00 → 2019-08-01 18:00 (-31d) | 0d → 1d |  | 44d → 65d |  |
